# section6

Schedule from MS Project, 2024-10-20 to 2025-04-21, costs in $, A marks actual dates.
Software
XDivition

## Calendars

- Standard: Mon-Wed 08:00-12:00, 13:00-17:00; Thu 08:00-15:00; Fri-Sat off; Sun 10:00-12:00, 13:00-18:00. Exceptions (off unless hours are given): 2024-10-28 to 2024-10-31 (Festival), 2024-11-17 to 2024-11-19 (Festival 2).

## Resources

| Resource | Unit | Rate | Cost per use |
| --- | --- | --- | --- |
| Software Engineer |  | 15 |  |
| Graphic Designers |  | 0.31 |  |
| UI/UX Designers |  | 8 |  |
| Webiste Frontend Team |  | 10 |  |
| Mobile Frontend Team |  | 10 |  |
| Backend Team |  | 12 |  |
| Testers |  | 17 | 200 |
| Tech Leader |  | 20 |  |
| IT Team |  | 10 |  |
| Busses |  |  | 4000 |
| Cars |  |  | 3000 |
| Data Entry Team |  | 2 |  |
| Ai Description Generator |  | 0.12 |  |
| Marketing Fund |  |  |  |
| Plane ticket |  |  | 100 |
| Cruise |  |  | 100 |
| Servers | Server | 2000 |  |
| Computers | Computer | 300 |  |
| Routers | Router | 30 | 10 |
| Wires | meter | 1 | 10 |
| Dahabiya Cruise | Condtion |  | 250 |
| Boat ride |  |  | 3 |
| Resort night |  |  | 100 |
| Hotel night |  |  | 50 |
| Luxury Villa night |  |  | 80 |
| Restaurant meal |  |  | 20 |
| Tour Guides |  | 3 |  |

## Schedule

| ID | WBS | Task | Type | Duration | Start | Finish | Predecessors | Complete | Remaining | Baseline start | Baseline finish | Baseline duration | Total slack | Free slack | Constraint | Resources | Work | Actual work | Cost | Baseline cost | Actual cost |
| --- | --- | --- | --- | --- | --- | --- | --- | --- | --- | --- | --- | --- | --- | --- | --- | --- | --- | --- | --- | --- | --- |
| 1 | 1 | **Nile Horizons Travel** |  | 117.99d | 2024-10-20 A | 2025-04-21 |  | 21% | 92.66d | 2024-10-21 | 2025-04-17 | 114.99d | 0d |  |  |  | 1845.68h | 243.1h | 31,436.66 | 29,404.68 | 5,189.93 |
| 2 | 1.1 | **Tech** |  | 88.24d | 2024-11-07 A | 2025-03-23 |  | 24% | 67.12d | 2024-11-07 | 2025-03-19 | 86.99d | 0d |  |  |  | 1637.68h | 243.1h | 23,259.66 | 17,294.68 | 5,189.93 |
| 3 | 1.1.1 | **Software** |  | 88.24d | 2024-11-07 A | 2025-03-23 |  | 8% | 80.91d | 2024-11-07 | 2025-03-19 | 86.99d | 0d |  |  |  | 1435.68h | 94h | 17,139.66 | 11,094.68 | 1,036.68 |
| 4 | 1.1.1.1 | **Requirements Specification** |  | 4d | 2024-11-07 A | 2024-11-13 |  | 99% | 0d | 2024-11-07 | 2024-11-13 | 4d | 0d |  |  |  | 32h | 32h | 513.45 | 513.45 | 513.45 |
| 5 | 1.1.1.1.1 | Staff Requirements |  | 4d | 2024-11-07 A | 2024-11-13 A |  | 100% |  | 2024-11-07 | 2024-11-13 | 4d |  |  | start no earlier than 2024-11-01 | Software Engineer [50%] | 16h | 16h | 240 | 240 | 240 |
| 6 | 1.1.1.1.2 | Customers Requirements |  | 4d | 2024-11-07 A | 2024-11-13 | 5SS | 99% | 0d | 2024-11-07 | 2024-11-13 | 4d | 0d |  |  | Software Engineer [29.1%]; Tech Leader [29.1%] | 16h | 16h | 273.45 | 273.45 | 273.45 |
| 7 | 1.1.1.1.3 | Report Deadline | milestone | 0d | 2024-11-13 A | 2024-11-13 A | 5, 6 | 100% |  | 2024-11-13 | 2024-11-13 | 0d |  |  | start no earlier than 2024-10-31 |  |  |  |  |  |  |
| 8 | 1.1.1.2 | **Design** |  | 13.74d | 2024-11-13 A | 2024-12-09 | 4 | 24% | 10.45d | 2024-11-13 | 2024-11-27 | 6.24d | 0d |  |  |  | 200.8h | 42.8h | 2,253.22 | 1,001.22 | 331.22 |
| 9 | 1.1.1.2.1 | Branding |  | 1.24d | 2024-11-13 A | 2024-11-14 A |  | 100% |  | 2024-11-13 | 2024-11-14 | 1.24d |  |  |  | Graphic Designers [70%]; UI/UX Designers | 16.8h | 16.8h | 81.22 | 81.22 | 81.22 |
| 10 | 1.1.1.2.2 | UI/UX |  | 1w | 2024-11-14 A | 2024-11-27 | 9 | 50% | 0.5w | 2024-11-14 | 2024-11-27 | 1w | 1.25d |  |  | UI/UX Designers | 40h | 20h | 320 | 320 | 160 |
| 11 | 1.1.1.2.3 | System Diagrams |  | 1.25w | 2024-11-14 A | 2024-11-28 | 10FF | 12% | 1.1w | 2024-11-14 | 2024-11-27 | 1w | 0d |  |  | Software Engineer; UI/UX Designers | 94h | 6h | 1,102 | 600 | 90 |
| 12 | 1.1.1.2.4 | Database Design |  | 1.25w | 2024-11-28 | 2024-12-09 | 11 |  |  |  |  |  | 0d |  |  | Software Engineer | 50h |  | 750 |  |  |
| 13 | 1.1.1.3 | **Implementation** |  | 70.5d | 2024-12-09 A | 2025-03-23 | 8 | 2% | 69.39d | 2024-11-27 | 2025-01-02 | 25d | 0d |  |  |  | 1202.88h | 19.2h | 14,372.99 | 3,040 | 192 |
| 14 | 1.1.1.3.1 | **Frontend** |  | 48d | 2024-12-09 A | 2025-02-17 |  | 3% | 46.38d | 2024-11-27 | 2024-12-11 | 10d | 0d |  |  |  | 568h | 19.2h | 5,680 | 1,600 | 192 |
| 15 | 1.1.1.3.1.1 | **Website** |  | 48d | 2024-12-09 A | 2025-02-17 |  | 5% | 45.6d | 2024-11-27 | 2024-12-11 | 2w | 0d |  |  | Webiste Frontend Team | 384h | 19.2h | 3,840 | 800 | 192 |
| 16 | 1.1.1.3.1.1.1 | DashBoard |  | 1mo | 2024-12-09 A | 2025-01-07 |  | 12% | 0.88mo |  |  |  | 0d |  |  |  |  |  |  |  |  |
| 17 | 1.1.1.3.1.1.2 | Landing Page |  | 4d | 2025-01-07 | 2025-01-13 | 16 |  |  |  |  |  | 0d |  |  |  |  |  |  |  |  |
| 18 | 1.1.1.3.1.1.3 | **Tours** |  | 15d | 2025-01-13 | 2025-02-04 | 17 |  |  |  |  |  | 0d |  |  |  |  |  |  |  |  |
| 19 | 1.1.1.3.1.1.3.1 | Tours List |  | 1.5w | 2025-01-13 | 2025-01-23 |  |  |  |  |  |  | 0d |  |  |  |  |  |  |  |  |
| 20 | 1.1.1.3.1.1.3.2 | Tour Details |  | 1.5w | 2025-01-23 | 2025-02-04 | 19 |  |  |  |  |  | 0d |  |  |  |  |  |  |  |  |
| 21 | 1.1.1.3.1.1.4 | Payment |  | 3d | 2025-02-04 | 2025-02-09 | 18 |  |  |  |  |  | 0d |  |  |  |  |  |  |  |  |
| 22 | 1.1.1.3.1.1.5 | Blog |  | 1w | 2025-02-09 | 2025-02-16 | 21 |  |  |  |  |  | 0d |  |  |  |  |  |  |  |  |
| 23 | 1.1.1.3.1.1.6 | Contact |  | 1d | 2025-02-16 | 2025-02-17 | 22 |  |  |  |  |  | 0d |  |  |  |  |  |  |  |  |
| 24 | 1.1.1.3.1.2 | **Mobile** |  | 23d | 2024-12-09 | 2025-01-12 |  |  |  | 2024-11-27 | 2024-12-11 | 2w | 25d |  |  | Mobile Frontend Team | 184h |  | 1,840 | 800 |  |
| 25 | 1.1.1.3.1.2.1 | Home Page |  | 4d | 2024-12-09 | 2024-12-15 | 16SS |  |  |  |  |  | 25d | 0d |  |  |  |  |  |  |  |

| ID | WBS | Task | Type | Duration | Start | Finish | Predecessors | Complete | Remaining | Baseline start | Baseline finish | Baseline duration | Total slack | Free slack | Constraint | Resources | Work | Actual work | Cost | Baseline cost | Actual cost |
| --- | --- | --- | --- | --- | --- | --- | --- | --- | --- | --- | --- | --- | --- | --- | --- | --- | --- | --- | --- | --- | --- |
| 26 | 1.1.1.3.1.2.2 | **Tours** |  | 15d | 2024-12-15 | 2025-01-06 | 25 |  |  |  |  |  | 25d | 0d |  |  |  |  |  |  |  |
| 27 | 1.1.1.3.1.2.2.1 | Tours List |  | 1.5w | 2024-12-15 | 2024-12-25 |  |  |  |  |  |  | 25d | 0d |  |  |  |  |  |  |  |
| 28 | 1.1.1.3.1.2.2.2 | Tour Details |  | 1.5w | 2024-12-25 | 2025-01-06 | 27 |  |  |  |  |  | 25d |  |  |  |  |  |  |  |  |
| 29 | 1.1.1.3.1.2.3 | Payment |  | 3d | 2025-01-06 | 2025-01-09 | 26 |  |  |  |  |  | 25d | 0d |  |  |  |  |  |  |  |
| 30 | 1.1.1.3.1.2.4 | Contact |  | 1d | 2025-01-09 | 2025-01-12 | 29 |  |  |  |  |  | 25d |  |  |  |  |  |  |  |  |
| 31 | 1.1.1.3.2 | **Backend** |  | 22.5d | 2025-02-17 | 2025-03-23 | 14 |  |  | 2024-12-11 | 2025-01-02 | 15d | 0d |  |  | Backend Team | 180h |  | 2,160 | 1,440 |  |
| 32 | 1.1.1.3.2.1 | Database |  | 1.5w | 2025-02-17 | 2025-02-27 |  |  |  | 2024-12-11 | 2024-12-18 | 1w | 0d |  |  |  |  |  |  |  |  |
| 33 | 1.1.1.3.2.2 | File Storage |  | 4d | 2025-02-17 | 2025-02-23 | 32SS |  |  |  |  |  | 18.5d |  |  |  |  |  |  |  |  |
| 34 | 1.1.1.3.2.3 | Api Server |  | 3w | 2025-02-27 | 2025-03-23 | 32, 33 |  |  | 2024-12-18 | 2025-01-02 | 2w | 0d |  |  |  |  |  |  |  |  |
| 35 | 1.1.1.3.3 | **Testing** |  | 35d | 2024-12-09 | 2025-01-28 |  |  |  | 2025-01-02 | 2025-03-19 | 1.99mo | 35.5d |  |  | Testers; Backend Team | 454.88h |  | 6,532.99 | 6,540 |  |
| 36 | 1.1.1.3.3.1 | Unit Testing |  | 3w | 2024-12-09 | 2024-12-30 |  |  |  | 2025-01-02 | 2025-03-19 | 1.99mo | 35.5d | 0d |  |  |  |  |  | 6,540 |  |
| 37 | 1.1.1.3.3.2 | Integration Testing |  | 2w | 2024-12-09 | 2024-12-23 | 36SS |  |  | 2025-01-02 | 2025-03-19 | 1.99mo | 40.5d | 0d |  |  |  |  |  | 6,540 |  |
| 38 | 1.1.1.3.3.3 | End to End Testing |  | 2w | 2024-12-09 | 2024-12-23 | 37SS |  |  | 2025-01-02 | 2025-03-19 | 1.99mo | 40.5d | 5d |  |  |  |  |  | 6,540 |  |
| 39 | 1.1.1.3.3.4 | Acceptance Testing |  | 1mo | 2024-12-30 | 2025-01-28 | 36, 37, 38 |  |  | 2025-01-02 | 2025-03-19 | 1.99mo | 35.5d |  |  |  |  |  |  | 6,540 |  |
| 40 | 1.1.1.4 | Solution is ready | milestone | 0d | 2025-03-23 | 2025-03-23 | 14, 35, 31 |  |  |  |  |  | 0d |  |  |  |  |  |  |  |  |
| 41 | 1.1.2 | **Hardware** |  | 50d | 2024-11-07 A | 2025-01-23 |  | 50% | 24.94d | 2024-11-07 | 2025-01-23 | 50d | 38.24d |  |  |  | 202h | 149.1h | 6,120 | 6,200 | 4,153.25 |
| 42 | 1.1.2.1 | Get Servers |  | 10w | 2024-11-07 A | 2025-01-23 |  | 75% | 2.5w | 2024-11-07 | 2025-01-23 | 10w | 38.24d |  |  | IT Team [10%]; Tech Leader [60%]; Cruise; Servers [1 Server] | 80.2h | 70.2h | 3,304 | 3,274 | 2,704 |
| 43 | 1.1.2.2 | Get Computers |  | 10w | 2024-11-07 A | 2025-01-23 |  | 18% | 8.18w | 2024-11-07 | 2025-01-23 | 10w | 38.24d |  |  | IT Team [10%]; Tech Leader [60%]; Cruise; Computers [3 Computer] | 80.2h | 37.3h | 2,204 | 2,154 | 837.25 |
| 44 | 1.1.2.3 | Host/ Domain |  | 2d | 2024-11-10 A | 2024-11-12 A |  | 100% |  | 2024-11-10 | 2024-12-08 | 12d |  |  |  | Tech Leader [10%] | 1.6h | 1.6h | 32 | 192 | 32 |
| 45 | 1.1.2.4 | Establish Network |  | 1w | 2024-11-07 A | 2024-11-14 A |  | 100% |  | 2024-11-07 | 2024-11-14 | 1w |  |  |  | IT Team; Routers [2 Router]; Wires [100 meter] | 40h | 40h | 580 | 580 | 580 |
| 46 | 1.2 | **Tours Planning** |  | 10d | 2024-10-20 A | 2024-11-07 |  |  | 10d | 2024-11-07 | 2024-12-18 | 25d | 87.99d |  |  |  | 208h |  | 7,877 | 410 |  |
| 47 | 1.2.1 | Categorize tours according to tour type and city of operation |  | 3d | 2024-10-20 | 2024-10-23 | 48SS |  |  |  |  |  | 94.99d |  |  | Tour Guides [200%] | 48h |  | 144 |  |  |
| 48 | 1.2.2 | Create Tour Details for each tour |  | 2w | 2024-10-20 | 2024-11-07 |  |  |  |  |  |  | 87.99d | 0d |  | Boat ride [50000%]; Busses [200%]; Cars [500%]; Hotel night [30000%]; Plane ticket [10000%]; Cruise [15000%]; Tour Guides [200%] | 160h |  | 7,733 |  |  |
| 49 | 1.2.3 | End of Tour Planning Phase | milestone | 0d | 2024-11-07 A | 2024-11-07 A | 48, 47 | 100% |  | 2024-11-07 | 2024-11-07 | 0d |  |  | start no earlier than 2024-10-31 |  |  |  |  |  |  |
| 50 | 1.3 | Publishing Project |  | 1mo | 2025-03-23 | 2025-04-21 | 2, 46 |  |  | 2025-03-19 | 2025-04-17 | 1mo | 0d |  |  | Marketing Fund [0.1%] |  |  | 300 | 300 |  |
| 51 | 1.4 | Project Finished | milestone | 0d | 2025-04-21 | 2025-04-21 | 50 |  |  |  |  |  | 0d |  |  |  |  |  |  |  |  |
